# 10 — cifra.md for JavaScript (cifra.md repository, js/)
#
# The app's implementation of the format, held to the corpus byte for byte.
# Framework-free: the view is the only layer that knows React.

task cifra_js "cifra.md for JavaScript" {
  depends format.canonical_form

  task package "Package and corpus harness" {
    effort 1d
    allocate team
    note "cifra.md: js/ package (ES modules, no runtime dependencies), Vitest, a harness running every corpus entry's checks in both directions."
  }
  task text_layer "Text layer" {
    effort 1d
    allocate team
    depends !package
    note "cifra.md: §1.3 — UTF-8, NFC, LF, U+FEFF, tabs, whitespace as U+0020 only, marker lines."
  }
  task chords "Chord symbols and dialects" {
    effort 2d
    allocate team
    depends !text_layer
    note "cifra.md: §5 grammar, the canonical chord model, the three dialects and their ambiguities. Explore Chords' core/notation is the guide."
  }
  task reader "Reader" {
    effort 6d
    allocate team
    depends !chords
    note "cifra.md: §1-7 — metadata, sections, fences, chord lines, repeats, sung lines with attachment and the layout convergence pass (§4.5), tunings, voicings, diagnostics."
  }
  task writer "Canonical writer" {
    effort 4d
    allocate team
    depends !reader
    note "cifra.md: §8 — invariants I1-I5, the numbered serializer, sung-line printing, refusing marked texts."
  }
  task setlists "Setlists" {
    effort 2d
    allocate team
    depends !text_layer, format.setlist_corpus
    note "cifra.md: chapter 10 reader, canonical writer and editing operations."
  }
  task editing "Editing operations" {
    effort 2d
    allocate team
    depends !writer
    note "cifra.md: §8.5 — choose a shape for an occurrence or a key, clear, many at once, add a variation; what the arrange mode and the wizard call."
  }
  task merge "Merge" {
    effort 8d
    allocate team
    depends !writer, !setlists, format.merge
    note "cifra.md: chapter 11 — whole files, alignment, chart, footnote markers with the grouping merged three ways, voicings, setlists, the conflict model and marked text. Held to corpus/merge/."
  }
  task diff "Diff in musical terms" {
    effort 3d
    allocate team
    depends !reader
    note "The summary the save sheet, history and previews show: 'Verse bar 5: G7 -> D♭7; voicings for G4 C4 E4 A4 added'. Not in the spec; the app's own. Workflows 4, 6."
  }
  task conformance "Conformance" {
    effort 2d
    allocate team
    depends !writer, !setlists, !merge
    note "cifra.md: every corpus and merge-corpus entry passes; the property tests of §11.3 ported; the Merger profile of §9 claimed."
  }
}
